# lib_zdtm_sync - Detailed Plan

Schedule from Planner, 2007-01-10 to 2007-05-04.
ZSREP

## Calendars

- Default: Mon-Fri 08:00-12:00, 13:00-17:00; Sat-Sun off. Exceptions (off unless hours are given): 2007-02-04.

## Resources

| Resource | Group |
| --- | --- |
| John McCullough | Developers |
| Robert Wohleb | Developers |
| Andrew De Ponte | Project Leader |

## Schedule

| ID | WBS | Task | Start | Finish | Predecessors | Complete | Resources | Work |
| --- | --- | --- | --- | --- | --- | --- | --- | --- |
| 1 | 1 | Implement Cross-Platform Network Layer | 2007-01-10 | 2007-01-12 |  | 100% | Andrew De Ponte | 24h |
| 2 | 2 | **Zaurus Synchronization API** | 2007-01-15 | 2007-02-21 | 1 |  |  | 536h |
| 3 | 2.1 | Initialize Library | 2007-01-15 | 2007-01-15 |  | 100% | Andrew De Ponte | 8h |
| 4 | 2.2 | **Initiate Sync** | 2007-01-15 | 2007-01-15 |  | 100% | Andrew De Ponte | 24h |
| 5 | 2.2.1 | Connect to Zaurus | 2007-01-15 | 2007-01-15 |  | 100% | Andrew De Ponte | 8h |
| 6 | 2.2.2 | Handle Connection | 2007-01-15 | 2007-01-15 |  | 100% | Andrew De Ponte | 8h |
| 7 | 2.2.3 | Move Connect Into Initiate | 2007-01-15 | 2007-01-15 |  | 100% | Andrew De Ponte | 8h |
| 8 | 2.3 | **Obtain Device Information** | 2007-01-16 | 2007-01-17 | 4 |  |  | 24h |
| 9 | 2.3.1 | RIG Message | 2007-01-16 | 2007-01-16 |  | 100% | Andrew De Ponte | 8h |
| 10 | 2.3.2 | AIG Message | 2007-01-16 | 2007-01-16 |  | 100% | Andrew De Ponte | 8h |
| 11 | 2.3.3 | Stored Device Info Updating | 2007-01-17 | 2007-01-17 | 9, 10 | 100% | Andrew De Ponte | 8h |
| 12 | 2.4 | Check If Requires Authentication | 2007-01-18 | 2007-01-18 | 8 | 100% | Andrew De Ponte | 8h |
| 13 | 2.5 | **Authenticate Password** | 2007-01-19 | 2007-01-22 | 12 |  |  | 32h |
| 14 | 2.5.1 | AEX Message | 2007-01-19 | 2007-01-19 |  | 100% | Andrew De Ponte | 8h |
| 15 | 2.5.2 | RRL Message | 2007-01-19 | 2007-01-19 |  | 100% | Andrew De Ponte | 8h |
| 16 | 2.5.3 | ANG Message | 2007-01-19 | 2007-01-19 |  | 100% | Andrew De Ponte | 8h |
| 17 | 2.5.4 | Auth Passwd Using Messages | 2007-01-22 | 2007-01-22 | 14, 15, 16 |  | Andrew De Ponte | 8h |
| 18 | 2.6 | Check If Requires Full Sync | 2007-01-18 | 2007-01-18 | 8 | 100% | Andrew De Ponte | 8h |
| 19 | 2.7 | **Obtain Zaurus Sync State** | 2007-01-23 | 2007-01-24 | 13 |  |  | 24h |
| 20 | 2.7.1 | RMG Message | 2007-01-23 | 2007-01-23 |  | 100% | Andrew De Ponte | 8h |
| 21 | 2.7.2 | AMG Message | 2007-01-23 | 2007-01-23 |  | 100% | Andrew De Ponte | 8h |
| 22 | 2.7.3 | Obtain Sync State Using Messages | 2007-01-24 | 2007-01-24 | 20, 21 | 100% | Andrew De Ponte | 8h |
| 23 | 2.8 | **Obtain Last Time Synced** | 2007-01-25 | 2007-01-26 | 19 |  |  | 24h |
| 24 | 2.8.1 | RTG Message | 2007-01-25 | 2007-01-25 |  | 100% | Andrew De Ponte | 8h |
| 25 | 2.8.2 | ATG Message | 2007-01-25 | 2007-01-25 |  | 100% | Andrew De Ponte | 8h |
| 26 | 2.8.3 | Get Last Time Sync Using Messages | 2007-01-26 | 2007-01-26 | 25, 24 |  | Andrew De Ponte | 8h |

| ID | WBS | Task | Start | Finish | Predecessors | Complete | Constraint | Resources | Work |
| --- | --- | --- | --- | --- | --- | --- | --- | --- | --- |
| 27 | 2.9 | **Set Current Sync Time** | 2007-01-29 | 2007-01-30 | 23 |  |  |  | 16h |
| 28 | 2.9.1 | RTS Message | 2007-01-29 | 2007-01-29 |  | 100% |  | Andrew De Ponte | 8h |
| 29 | 2.9.2 | Set Cur Sync Time Using Messages | 2007-01-30 | 2007-01-30 | 28 |  |  | Andrew De Ponte | 8h |
| 30 | 2.10 | **Reset Sync Log** | 2007-02-15 | 2007-02-19 |  |  |  |  | 24h |
| 31 | 2.10.1 | RMS Message | 2007-02-15 | 2007-02-15 |  |  | start no earlier than 2007-02-15 | Robert Wohleb | 8h |
| 32 | 2.10.2 | RMS (Empty) Message | 2007-02-16 | 2007-02-16 | 31 |  | start no earlier than 2007-02-15 | Robert Wohleb | 8h |
| 33 | 2.10.3 | Reset Sync Log Using Messages | 2007-02-19 | 2007-02-19 | 31, 32 |  |  | Robert Wohleb | 8h |
| 34 | 2.11 | **Reset Item States to New** | 2007-02-20 | 2007-02-21 | 30 |  |  |  | 16h |
| 35 | 2.11.1 | RSS Message | 2007-02-20 | 2007-02-20 |  |  |  | Robert Wohleb | 8h |
| 36 | 2.11.2 | Reset Item States Using RSS Message | 2007-02-21 | 2007-02-21 | 35 |  |  | Robert Wohleb | 8h |
| 37 | 2.12 | **Obtain Sync Param Format** | 2007-01-15 | 2007-01-16 |  |  |  |  | 24h |
| 38 | 2.12.1 | RDI Message | 2007-01-15 | 2007-01-15 |  |  |  |  | 8h |
| 39 | 2.12.2 | ADI Message | 2007-01-15 | 2007-01-15 |  |  |  |  | 8h |
| 40 | 2.12.3 | Get Sync Param Format Using Messages | 2007-01-16 | 2007-01-16 | 39, 38 |  |  |  | 8h |
| 41 | 2.13 | **Obtain Sync ID List** | 2007-01-31 | 2007-02-01 | 27 |  |  |  | 24h |
| 42 | 2.13.1 | RSY Message | 2007-01-31 | 2007-01-31 |  | 100% |  | Andrew De Ponte | 8h |
| 43 | 2.13.2 | ASY Message | 2007-01-31 | 2007-01-31 |  | 100% |  | Andrew De Ponte | 8h |
| 44 | 2.13.3 | Get Sync ID List Using Messages | 2007-02-01 | 2007-02-01 | 43, 42 |  |  |  | 8h |
| 45 | 2.14 | **Obtain Item Data** | 2007-02-02 | 2007-02-05 | 41 |  |  |  | 24h |
| 46 | 2.14.1 | RDR Message | 2007-02-02 | 2007-02-02 |  | 100% |  | Andrew De Ponte | 8h |
| 47 | 2.14.2 | ADR Message | 2007-02-02 | 2007-02-02 |  |  |  |  | 8h |
| 48 | 2.14.3 | Get Item Data Using Messages | 2007-02-05 | 2007-02-05 | 47, 46 |  |  |  | 8h |
| 49 | 2.15 | Add Todo Items | 2007-02-06 | 2007-02-08 | 45, 41 |  |  |  | 24h |
| 50 | 2.16 | Add Calendar Items | 2007-02-06 | 2007-02-08 | 45, 41 |  |  |  | 24h |
| 51 | 2.17 | Add Address Items | 2007-02-06 | 2007-02-08 | 45, 41 |  |  |  | 24h |
| 52 | 2.18 | Mod Todo Items | 2007-02-06 | 2007-02-08 | 45, 41 |  |  |  | 24h |
| 53 | 2.19 | Mod Calendar Items | 2007-02-06 | 2007-02-08 | 45, 41 |  |  |  | 24h |
| 54 | 2.20 | Mod Address Items | 2007-02-06 | 2007-02-08 | 45, 41 |  |  |  | 24h |
| 55 | 2.21 | Del Todo Items | 2007-02-06 | 2007-02-08 | 45, 41 |  |  |  | 24h |
| 56 | 2.22 | Del Calendar Items | 2007-02-06 | 2007-02-08 | 45, 41 |  |  |  | 24h |
| 57 | 2.23 | Del Address Items | 2007-02-06 | 2007-02-08 | 45, 41 |  |  |  | 24h |

| ID | WBS | Task | Type | Duration | Start | Finish | Predecessors | Complete | Constraint | Resources | Work |
| --- | --- | --- | --- | --- | --- | --- | --- | --- | --- | --- | --- |
| 58 | 2.24 | **Terminate Sync** |  |  | 2007-02-06 | 2007-02-07 | 45 | 100% |  | Andrew De Ponte | 32h |
| 59 | 2.24.1 | RDS Message |  |  | 2007-02-06 | 2007-02-06 |  | 100% |  | Andrew De Ponte | 8h |
| 60 | 2.24.2 | Terminate Sync Using Messages |  |  | 2007-02-07 | 2007-02-07 | 59 |  |  |  | 8h |
| 61 | 2.24.3 | Disconnect from Zaurus |  |  | 2007-02-06 | 2007-02-06 |  | 100% |  | Andrew De Ponte | 8h |
| 62 | 2.24.4 | Move Disconnect to Terminate |  |  | 2007-02-06 | 2007-02-06 |  |  |  | Andrew De Ponte | 8h |
| 63 | 2.25 | Finialize Library |  |  | 2007-02-07 | 2007-02-07 | 61 | 100% |  | Andrew De Ponte | 8h |
| 64 | 3 | Code Freeze | milestone | 0d | 2007-04-24 | 2007-04-24 |  |  | must start on 2007-04-24 |  |  |
| 65 | 4 | Spring 2007 Semester Ends | milestone | 0d | 2007-05-04 | 2007-05-04 |  |  | must start on 2007-05-04 |  |  |
